Schedule from MS Project, 2016-02-15 to 2016-06-29.

## Calendars

- 标准: Mon-Fri 08:00-12:00, 13:00-17:00; Sat-Sun off. Exceptions (off unless hours are given): 2016-04-30 08:00-12:00, 13:00-17:00.

## Resources

| Resource |
| --- |
| 王宁 |
| 胡金辉 |
| 付殿东 |
| 刘佳丽 |
| 张景山 |
| 皮亚杰 |
| 王宇 |
| 刘嘉利 |

## Schedule

| ID | WBS | Task | Duration | Start | Finish | Predecessors | Total slack | Free slack | Constraint | Resources | Work |
| --- | --- | --- | --- | --- | --- | --- | --- | --- | --- | --- | --- |
| 1 | 1 | 项目计划 | 5d | 2016-02-23 | 2016-02-29 |  | 88d |  | start no earlier than 2016-02-23 | 王宁 | 40h |
| 2 | 2 | 需求分析 | 20d | 2016-02-15 | 2016-03-12 |  | 71d |  | finish no earlier than 2016-03-12 | 胡金辉 | 160h |
| 3 | 3 | 概要设计 | 40d | 2016-03-08 | 2016-04-30 |  | 35d |  | start no earlier than 2016-03-08 | 王宁 | 320h |
| 4 | 4 | **功能开发** | 35d? | 2016-03-14 | 2016-04-29 |  | 44d |  |  |  | 560h |
| 5 | 4.1 | **系统管理** | 4d? | 2016-03-14 | 2016-03-17 |  | 75d |  |  |  | 80h |
| 6 | 4.1.1 | 用户管理 | 1d | 2016-03-14 | 2016-03-14 |  | 78d |  | start no earlier than 2016-03-14 | 张景山 | 8h |
| 7 | 4.1.2 | 角色管理 | 1d | 2016-03-14 | 2016-03-14 |  | 78d |  | start no earlier than 2016-03-14 | 张景山 | 8h |
| 8 | 4.1.3 | 日志管理 | 4d? | 2016-03-14 | 2016-03-17 |  | 75d |  | finish no earlier than 2016-03-17 | 付殿东 | 32h |
| 9 | 4.1.4 | 安全管理 | 2d? | 2016-03-14 | 2016-03-15 |  | 77d |  | finish no earlier than 2016-03-15 | 付殿东 | 16h |
| 10 | 4.1.5 | 字典表管理 | 2d? | 2016-03-14 | 2016-03-15 |  | 77d |  | finish no earlier than 2016-03-15 | 刘嘉利 | 16h |
| 11 | 4.2 | **信用证管理** | 13d | 2016-03-15 | 2016-03-31 |  | 65d |  |  |  | 104h |
| 12 | 4.2.1 | 信用证新增 | 4d | 2016-03-15 | 2016-03-18 |  | 65d | 0d | finish no earlier than 2016-03-18 | 王宇 | 32h |
| 13 | 4.2.2 | 信用证查询 | 5d | 2016-03-21 | 2016-03-25 | 12 | 65d | 0d | finish no earlier than 2016-03-18 | 王宇 | 40h |
| 14 | 4.2.3 | 信用证修改 | 2d | 2016-03-28 | 2016-03-29 | 13 | 65d | 0d |  | 王宇 | 16h |
| 15 | 4.2.4 | 信用证提交 | 2d | 2016-03-30 | 2016-03-31 | 14 | 65d |  |  | 王宇 | 16h |
| 16 | 4.3 | **海运提货单管理** | 14d? | 2016-03-15 | 2016-04-01 |  | 64d |  |  |  | 112h |
| 17 | 4.3.1 | 海运提货单新增 | 5d? | 2016-03-15 | 2016-03-21 |  | 64d | 0d | start no earlier than 2016-03-15 | 付殿东 | 40h |
| 18 | 4.3.2 | 海运提货单查询 | 5d? | 2016-03-22 | 2016-03-28 | 17 | 64d | 0d | finish no earlier than 2016-03-18 | 付殿东 | 40h |
| 19 | 4.3.3 | 海运提货单修改 | 2d? | 2016-03-29 | 2016-03-30 | 18 | 64d | 0d |  | 付殿东 | 16h |
| 20 | 4.3.4 | 海运提货单入库 | 2d? | 2016-03-31 | 2016-04-01 | 19 | 64d |  |  | 付殿东 | 16h |
| 21 | 4.4 | **货权转让单管理** | 23d? | 2016-03-15 | 2016-04-14 |  | 55d |  |  |  | 184h |
| 22 | 4.4.1 | 货权转让单新增 | 8d? | 2016-03-15 | 2016-03-24 |  | 55d | 0d | finish no earlier than 2016-03-24 | 张景山 | 64h |
| 23 | 4.4.2 | 货权转让单查询 | 4d | 2016-03-25 | 2016-03-30 | 22 | 55d | 0d |  | 张景山 | 32h |
| 24 | 4.4.3 | 货权转让单修改 | 2d | 2016-03-31 | 2016-04-01 | 23 | 55d | 0d |  | 张景山 | 16h |
| 25 | 4.4.4 | 货权转让单银行确认 | 2d? | 2016-04-04 | 2016-04-05 | 24 | 55d | 0d | finish no earlier than 2016-03-08 | 张景山 | 16h |
| 26 | 4.4.5 | 货权转让单银行驳回 | 1d? | 2016-04-06 | 2016-04-06 | 25 | 55d | 0d |  | 张景山 | 8h |
| 27 | 4.4.6 | 货权转让单农垦确认 | 2d? | 2016-04-07 | 2016-04-08 | 26 | 55d | 0d |  | 张景山 | 16h |
| 28 | 4.4.7 | 货权转让单农垦驳回 | 1d? | 2016-04-11 | 2016-04-11 | 27 | 55d | 0d |  | 张景山 | 8h |
| 29 | 4.4.8 | 货权转让单聚龙打印 | 2d? | 2016-04-12 | 2016-04-13 | 28 | 55d | 0d |  | 张景山 | 16h |
| 30 | 4.4.9 | 货权转让单完成 | 1d? | 2016-04-14 | 2016-04-14 | 29 | 55d |  |  | 张景山 | 8h |

Notes:
- 1: 完成
- 2: 完成
- 3: 完成

| ID | WBS | Task | Type | Duration | Start | Finish | Predecessors | Total slack | Constraint | Resources | Work |
| --- | --- | --- | --- | --- | --- | --- | --- | --- | --- | --- | --- |
| 31 | 4.5 | **报表统计** |  | 5d | 2016-04-18 | 2016-04-22 |  | 49d |  |  | 40h |
| 32 | 4.5.1 | 信用证统计 |  | 5d | 2016-04-18 | 2016-04-22 |  | 49d | start no earlier than 2016-04-18 | 付殿东 | 40h |
| 33 | 4.6 | 首页统计 |  | 5d | 2016-04-25 | 2016-04-29 |  | 44d | finish no earlier than 2016-04-29 |  | 40h |
| 34 | 5 | **系统内部测试调整** |  | 6d | 2016-05-05 | 2016-05-12 |  | 34d |  |  | 264h |
| 35 | 5.1 | 界面功能测试调整 |  | 6d | 2016-05-05 | 2016-05-12 |  | 34d | start no earlier than 2016-05-05 |  | 96h |
| 36 | 5.2 | 业务逻辑功能测试调整 |  | 5d | 2016-05-06 | 2016-05-12 |  | 34d | start no earlier than 2016-05-06 |  | 80h |
| 37 | 5.3 | 整个系统测试调整 | milestone | 5d | 2016-05-06 | 2016-05-12 |  | 34d | start no earlier than 2016-05-06 |  | 88h |
| 38 | 6 | 系统发布 |  | 3d | 2016-05-16 | 2016-05-18 |  | 0d | finish no earlier than 2016-05-18 |  | 48h |
| 39 | 7 | 项目试运行 |  | 30d | 2016-05-19 | 2016-06-29 | 38 | 0d | start no earlier than 2016-05-09 |  |  |
